# marzec

Schedule from MS Project, 2019-01-23 to 2019-11-18, costs in zł, A marks actual dates.

## Calendars

- Standardowy: Mon-Fri 09:00-13:00, 14:00-18:00; Sat-Sun off.

## Resources

| Resource | Rate |
| --- | --- |
| Project Manager | 150 |
| Backend Developer | 80 |
| Senior Backend Dev | 150 |
| Frontend Dev | 80 |
| Senior Frontend Dev | 150 |
| Android Dev | 80 |
| iOS Dev | 80 |
| UI/UX Designer | 60 |
| DevOps | 80 |
| Tester Manualny | 45 |
| Zestaw Komputerowy | 6000 |
| Licencje |  |
| Opłaty serwerowe |  |
| Opłaty za lokal oraz media |  |

## Schedule

| ID | WBS | Task | Duration | Start | Finish | Predecessors | Complete | Remaining | Total slack | Constraint | Resources | Work | Actual work | Cost | Actual cost |
| --- | --- | --- | --- | --- | --- | --- | --- | --- | --- | --- | --- | --- | --- | --- | --- |
| 1 | 1 | **Projekt Aplikacji "What The Chem"** | 213.75d | 2019-01-23 A | 2019-11-18 |  | 2% | 210.43d | 0d |  |  | 4768h | 28h | 500,920 | 4,200 |
| 2 | 1.1 | **Etap I - Analiza** | 8.5d | 2019-01-23 A | 2019-02-04 |  | 41% | 5d | 0d |  |  | 68h | 28h | 10,200 | 4,200 |
| 3 | 1.1.1 | Dokumentacja wymagań klienta | 7d | 2019-01-23 A | 2019-01-31 |  | 50% | 3.5d | 0d |  | Project Manager | 56h | 28h | 8,400 | 4,200 |
| 4 | 1.1.2 | Wybór narzędzi programistycznych oraz technologii | 1d | 2019-02-01 | 2019-02-01 | 3 |  |  | 0d |  | Project Manager | 8h |  | 1,200 |  |
| 5 | 1.1.3 | Podsumowanie etapu I | 4h | 2019-02-04 | 2019-02-04 | 4 |  |  | 0d |  | Project Manager | 4h |  | 600 |  |
| 6 | 1.2 | **Etap II - Projekt systemu i organizacja pracy** | 17.5d | 2019-02-04 | 2019-02-27 | 2 |  |  | 0d |  |  | 308h |  | 30,120 |  |
| 7 | 1.2.1 | Konfiguracja systemu kontrolii wersji | 1d | 2019-02-04 | 2019-02-05 |  |  |  | 0d |  | DevOps | 8h |  | 640 |  |
| 8 | 1.2.2 | Konfiguracje systemów Ciągłej Integracji | 1d | 2019-02-05 | 2019-02-06 | 7 |  |  | 0d |  | DevOps | 8h |  | 640 |  |
| 9 | 1.2.3 | Instalacja oraz konfiguracja bazy danych | 2d | 2019-02-06 | 2019-02-08 | 8 |  |  | 0d |  | DevOps; Backend Developer | 32h |  | 2,560 |  |
| 10 | 1.2.4 | Stworzenie projektu Frontendu | 4d | 2019-02-08 | 2019-02-14 | 9 |  |  | 0d | start no earlier than 2019-01-28 | Frontend Dev; Senior Frontend Dev; UI/UX Designer | 96h |  | 9,280 |  |
| 11 | 1.2.5 | Stworzenie projektu Backendu | 7d | 2019-02-14 | 2019-02-25 | 10 |  |  | 0d | start no earlier than 2019-01-29 | Backend Developer; Senior Backend Dev | 112h |  | 12,880 |  |
| 12 | 1.2.6 | Stworzenie projektu aplikacji mobilnej | 2d | 2019-02-25 | 2019-02-27 | 11 |  |  | 0d |  | UI/UX Designer; iOS Dev; Android Dev | 48h |  | 3,520 |  |
| 13 | 1.2.7 | Podsumowanie etapu II | 4h | 2019-02-27 | 2019-02-27 | 12 |  |  | 0d | start no earlier than 2019-01-31 | Project Manager | 4h |  | 600 |  |
| 14 | 1.3 | **Etap III - Prototyp** | 82d | 2019-02-28 | 2019-06-21 | 6 |  |  | 0d |  |  | 1496h |  | 156,640 |  |
| 15 | 1.3.1 | Stworzenie podstawowej struktury bazy danych | 3d | 2019-02-28 | 2019-03-04 |  |  |  | 0d |  | DevOps | 24h |  | 1,920 |  |
| 16 | 1.3.2 | Implementacja Backend | 28d | 2019-03-05 | 2019-04-11 | 15 |  |  | 0d |  | Backend Developer; Senior Backend Dev | 448h |  | 51,520 |  |
| 17 | 1.3.3 | Implementacja Frontend | 21d | 2019-04-12 | 2019-05-10 | 16 |  |  | 0d |  | Frontend Dev; Senior Frontend Dev | 336h |  | 38,640 |  |
| 18 | 1.3.4 | Implementacja aplikacji Android | 7d | 2019-05-13 | 2019-05-21 | 17 |  |  | 0d |  | Android Dev | 56h |  | 4,480 |  |
| 19 | 1.3.5 | Implementacja aplikacj iOS | 7d | 2019-05-22 | 2019-05-30 | 18 |  |  | 0d |  | iOS Dev | 56h |  | 4,480 |  |
| 20 | 1.3.6 | Implementacja aplikacji PWA | 7d | 2019-05-31 | 2019-06-10 | 19 |  |  | 0d |  | Frontend Dev; Senior Frontend Dev | 112h |  | 12,880 |  |
| 21 | 1.3.7 | Wstępne testy i poprawna krytycznych funkcjonalności | 6d | 2019-06-11 | 2019-06-18 | 20 |  |  | 0d |  | Android Dev; Backend Developer; Frontend Dev; DevOps; iOS Dev; Senior Backend Dev; Senior Frontend Dev; Tester Manualny; UI/UX Designer | 432h |  | 38,640 |  |
| 22 | 1.3.8 | Przedstawienie postępów klientowi | 1d | 2019-06-19 | 2019-06-19 | 21 |  |  | 0d |  | Project Manager; UI/UX Designer | 16h |  | 1,680 |  |
| 23 | 1.3.9 | Podsumowanie etapu III | 16h | 2019-06-20 | 2019-06-21 | 22 |  |  | 0d |  | Project Manager | 16h |  | 2,400 |  |
| 24 | 1.4 | **Etap IV - Produkcja** | 65d | 2019-06-24 | 2019-09-20 | 14 |  |  | 0d |  |  | 1168h |  | 125,920 |  |
| 25 | 1.4.1 | Stworzenie testów dla Backend | 28d | 2019-06-24 | 2019-07-31 |  |  |  | 0d |  | Senior Backend Dev; Backend Developer | 448h |  | 51,520 |  |
| 26 | 1.4.2 | Implementacja polityki bezpieczeństwa danych oraz nowych funkcjonalnosci - Backend | 14d | 2019-08-01 | 2019-08-20 | 25 |  |  | 0d |  | Backend Developer; Senior Backend Dev | 224h |  | 25,760 |  |
| 27 | 1.4.3 | Stworzenie testów dla Frontend | 7d | 2019-08-21 | 2019-08-29 | 26 |  |  | 0d |  | Senior Frontend Dev | 56h |  | 8,400 |  |
| 28 | 1.4.4 | Napisanie testów dla Android | 7d | 2019-08-30 | 2019-09-09 | 27 |  |  | 0d |  | Android Dev | 56h |  | 4,480 |  |
| 29 | 1.4.5 | Napisanie testów dla iOS | 7d | 2019-08-30 | 2019-09-09 | 27 |  |  | 0d |  | iOS Dev | 56h |  | 4,480 |  |
| 30 | 1.4.6 | Napisanie testów dla PWA | 2d | 2019-08-30 | 2019-09-02 | 27 |  |  | 5d |  | Senior Frontend Dev; Frontend Dev | 32h |  | 3,680 |  |
| 31 | 1.4.7 | Konsultacje z klientem | 7d | 2019-09-10 | 2019-09-18 | 30, 29, 28 |  |  | 0d |  | Android Dev; Backend Developer; Frontend Dev; Project Manager; UI/UX Designer | 280h |  | 25,200 |  |
| 32 | 1.4.8 | Podsumowanie etapu IV | 16h | 2019-09-19 | 2019-09-20 | 31 |  |  | 0d |  | Project Manager | 16h |  | 2,400 |  |

| ID | WBS | Task | Duration | Start | Finish | Predecessors | Total slack | Resources | Work | Cost |
| --- | --- | --- | --- | --- | --- | --- | --- | --- | --- | --- |
| 33 | 1.5 | **Etap V - Wdrożenie** | 40.75d | 2019-09-23 | 2019-11-18 | 24 | 0d |  | 1728h | 178,040 |
| 34 | 1.5.1 | Testy manualne | 7d | 2019-09-23 | 2019-10-01 |  | 0d | Tester Manualny | 56h | 2,520 |
| 35 | 1.5.2 | Optymalizacja oraz refactoring kodu | 12d | 2019-10-02 | 2019-10-17 | 34 | 0d | Android Dev; Backend Developer; DevOps; Frontend Dev; iOS Dev; Senior Backend Dev; Senior Frontend Dev | 672h | 67,200 |
| 36 | 1.5.3 | Poprawki kodu | 7d | 2019-10-18 | 2019-10-28 | 35 | 0d | Senior Backend Dev; Senior Frontend Dev | 112h | 16,800 |
| 37 | 1.5.4 | Umieszczenie aplikacji w sieci | 2d | 2019-10-29 | 2019-10-30 | 36 | 12.75d | DevOps; Senior Frontend Dev; Frontend Dev | 48h | 4,960 |
| 38 | 1.5.5 | Umieszczenie aplikacji w Android Play | 6h | 2019-10-29 | 2019-10-29 | 36 | 14d | Android Dev; DevOps | 12h | 960 |
| 39 | 1.5.6 | Umieszczenie aplikacji w Apple Store | 6h | 2019-10-29 | 2019-10-29 | 36 | 0d | DevOps; iOS Dev | 12h | 960 |
| 40 | 1.5.7 | Stworzenie dokumentacji projektu | 10d | 2019-10-29 | 2019-11-12 | 39 | 0d | Android Dev; Backend Developer; DevOps; Frontend Dev; iOS Dev; Project Manager; Senior Backend Dev; Senior Frontend Dev; UI/UX Designer | 720h | 72,800 |
| 41 | 1.5.8 | Przekazanie projektu klientowi | 2d | 2019-11-12 | 2019-11-14 | 40 | 0d | Android Dev; Senior Backend Dev; Senior Frontend Dev; Project Manager; UI/UX Designer | 80h | 9,440 |
| 42 | 1.5.9 | Podsumowanie etapu V | 16h | 2019-11-14 | 2019-11-18 | 41 | 0d | Project Manager | 16h | 2,400 |
